# Immeuble Méditerranée

Schedule from MS Project, 2019-07-30 to 2019-11-14, status date 2019-08-10, 7 hours a day, costs in €, A marks actual dates.

## Calendars

- Standard: Mon-Fri 09:00-12:00, 13:00-17:00; Sat-Sun off.

## Resources

| Resource | Group | Rate | Cost per use |
| --- | --- | --- | --- |
| NASHITA Laure | EQ01 | 25 |  |
| REGIO Mathias |  |  |  |
| Electronicien | OUV |  |  |
| Mécanicien | OUV |  |  |
| Contrôleur DC/DC | MAT |  |  |
| Onduleur SP1021 | MAT |  | 700 |
| DUPUIS Thomas |  |  |  |

## Schedule

| ID | WBS | Task | Type | Duration | Start | Finish | Predecessors | Complete | Remaining | Baseline start | Baseline finish | Baseline duration | Total slack | Free slack | Constraint | Resources | Work | Actual work | Cost | Baseline cost | Actual cost | Chemin critique |
| --- | --- | --- | --- | --- | --- | --- | --- | --- | --- | --- | --- | --- | --- | --- | --- | --- | --- | --- | --- | --- | --- | --- |
| 1 | 1 | Signature des contrats | milestone | 0d | 2019-07-30 | 2019-07-30 |  |  |  | 2019-07-30 | 2019-07-30 | 0d | 66.57d | 1d |  |  |  |  |  |  |  | Pas de variance |
| 2 | 2 | **Visite de chantier** |  | 11.43d | 2019-07-31 | 2019-08-15 |  |  |  | 2019-07-31 | 2019-08-15 | 11.43d | 65.57d |  |  |  |  |  |  |  |  | Pas de variance |
| 3 | 2.1 | Visite de chantier 1 |  | 1.14d | 2019-07-31 | 2019-08-01 | 1 |  |  | 2019-07-31 | 2019-08-01 | 1.14d | 65.57d | 0d | start no earlier than 2019-07-31 |  |  |  |  |  |  | Pas de variance |
| 4 | 2.2 | Visite de chantier 2 |  | 1.14d | 2019-08-01 | 2019-08-02 | 3 |  |  | 2019-08-01 | 2019-08-02 | 1.14d | 65.57d | 0d | start no earlier than 2019-07-31 |  |  |  |  |  |  | Pas de variance |
| 5 | 2.3 | Visite de chantier 3 |  | 1.14d | 2019-08-02 | 2019-08-05 | 4 |  |  | 2019-08-02 | 2019-08-05 | 1.14d | 65.57d | 0d | start no earlier than 2019-07-31 |  |  |  |  |  |  | Pas de variance |
| 6 | 2.4 | Visite de chantier 4 |  | 1.14d | 2019-08-05 | 2019-08-06 | 5 |  |  | 2019-08-05 | 2019-08-06 | 1.14d | 65.57d | 0d | start no earlier than 2019-08-02 |  |  |  |  |  |  | Pas de variance |
| 7 | 2.5 | Visite de chantier 5 |  | 1.14d | 2019-08-06 | 2019-08-07 | 6 |  |  | 2019-08-06 | 2019-08-07 | 1.14d | 65.57d | 0d | start no earlier than 2019-07-31 |  |  |  |  |  |  | Pas de variance |
| 8 | 2.6 | Visite de chantier 6 |  | 1.14d | 2019-08-07 | 2019-08-08 | 7 |  |  | 2019-08-07 | 2019-08-08 | 1.14d | 65.57d | 0d | start no earlier than 2019-07-31 |  |  |  |  |  |  | Pas de variance |
| 9 | 2.7 | Visite de chantier 7 |  | 1.14d | 2019-08-08 | 2019-08-09 | 8 |  |  | 2019-08-08 | 2019-08-09 | 1.14d | 65.57d | 0d | start no earlier than 2019-07-31 |  |  |  |  |  |  | Pas de variance |
| 10 | 2.8 | Visite de chantier 8 |  | 1.14d | 2019-08-12 | 2019-08-13 | 9 |  |  | 2019-08-12 | 2019-08-13 | 1.14d | 65.57d | 0d | start no earlier than 2019-08-02 |  |  |  |  |  |  | Pas de variance |
| 11 | 2.9 | Visite de chantier 9 |  | 1.14d | 2019-08-13 | 2019-08-14 | 10 |  |  | 2019-08-13 | 2019-08-14 | 1.14d | 65.57d | 0d | start no earlier than 2019-07-31 |  |  |  |  |  |  | Pas de variance |
| 12 | 2.10 | Visite de chantier 10 |  | 1.14d | 2019-08-14 | 2019-08-15 | 11 |  |  | 2019-08-14 | 2019-08-15 | 1.14d | 65.57d |  | start no earlier than 2019-07-31 |  |  |  |  |  |  | Pas de variance |
| 13 | 3 | **Travaux préparatoires** |  | 25d | 2019-07-30 A | 2019-09-02 |  | 60% | 10d | 2019-07-30 | 2019-09-02 | 25d |  |  |  |  | 280h | 210h | 4,375 | 4,375 | 2,625 | Pas de variance |
| 14 | 3.1 | Implantation géomètre |  | 5d | 2019-07-30 A | 2019-08-05 A |  | 100% |  | 2019-07-30 | 2019-08-05 | 5d |  |  |  | NASHITA Laure; REGIO Mathias | 70h | 70h | 875 | 875 | 875 | Pas de variance |
| 15 | 3.2 | Nettoyage / débroussaillage du terrain |  | 5d | 2019-08-06 A | 2019-08-12 A | 14 | 100% |  | 2019-08-06 | 2019-08-12 | 5d |  |  |  | REGIO Mathias; NASHITA Laure | 70h | 70h | 875 | 875 | 875 | Pas de variance |
| 16 | 3.3 | Evacuation des terres excédentaires |  | 5d | 2019-08-13 A | 2019-08-19 A | 15 | 100% |  | 2019-08-13 | 2019-08-19 | 5d |  |  |  | DUPUIS Thomas; NASHITA Laure | 70h | 70h | 875 | 875 | 875 | Pas de variance |
| 17 | 3.4 | Terrassements |  | 10d | 2019-08-20 | 2019-09-02 | 16 |  |  | 2019-08-20 | 2019-09-02 | 10d | 53d |  |  | NASHITA Laure | 70h |  | 1,750 | 1,750 |  | Pas de variance |
| 18 | 4 | **Fondations** |  | 13d | 2019-08-06 A | 2019-08-22 |  | 38% | 8d | 2019-08-06 | 2019-08-22 | 13d | -1d | 0d |  |  | 126h | 35h | 2,275 | 2,275 | 875 | Pas de variance |
| 19 | 4.1 | Semelles |  | 3d | 2019-08-06 A | 2019-08-08 A | 14 | 100% |  | 2019-08-06 | 2019-08-08 | 3d |  |  |  | NASHITA Laure | 21h | 21h | 525 | 525 | 525 | Pas de variance |
| 20 | 4.2 | Dalle sous-sol |  | 5d | 2019-08-09 A | 2019-08-15 | 19 | 40% | 3d | 2019-08-09 | 2019-08-15 | 5d | -1d | 0d |  | NASHITA Laure | 35h | 14h | 875 | 875 | 350 | Pas de variance |
| 21 | 4.3 | Murs sous-sol |  | 5d | 2019-08-16 | 2019-08-22 | 20 |  |  | 2019-08-16 | 2019-08-22 | 5d | -1d | 0d |  | Mécanicien; NASHITA Laure | 70h |  | 875 | 875 |  | Pas de variance |
| 22 | 5 | **Gros oeuvre** |  | 45d | 2019-08-23 | 2019-10-24 |  |  |  | 2019-08-23 | 2019-10-24 | 45d | -1d | 0d |  |  | 140h |  | 700 | 700 |  | Pas de variance |
| 23 | 5.1 | Elévation murs, planchers et toitures |  | 20d | 2019-08-23 | 2019-09-19 | 21 |  |  | 2019-08-23 | 2019-09-19 | 20d | -1d | 0d |  |  |  |  |  |  |  | Pas de variance |
| 24 | 5.2 | Planchers |  | 15d | 2019-09-20 | 2019-10-10 | 23 |  |  | 2019-09-20 | 2019-10-10 | 15d | 0d |  |  |  |  |  |  |  |  | Pas de variance |
| 25 | 5.3 | Menuiseries extérieures |  | 10d | 2019-10-11 | 2019-10-24 | 24 |  |  | 2019-10-11 | 2019-10-24 | 10d | 0d |  |  | Onduleur SP1021; Mécanicien | 140h |  | 700 | 700 |  | Pas de variance |
| 26 | 5.4 | Bâtiment hors d'eau, hors d'air | milestone | 0d | 2019-10-24 | 2019-10-24 | 25 |  |  | 2019-10-24 | 2019-10-24 | 0d | 0d |  |  |  |  |  |  |  |  | Pas de variance |

| ID | WBS | Task | Duration | Start | Finish | Predecessors | Baseline start | Baseline finish | Baseline duration | Total slack | Free slack | Deadline | Chemin critique |
| --- | --- | --- | --- | --- | --- | --- | --- | --- | --- | --- | --- | --- | --- |
| 27 | 6 | **Traitement extérieur des murs** | 15d | 2019-10-25 | 2019-11-14 |  | 2019-10-25 | 2019-11-14 | 15d | 0d |  |  | Pas de variance |
| 28 | 6.1 | Bardage | 10d | 2019-10-25 | 2019-11-07 | 26 | 2019-10-25 | 2019-11-07 | 10d | 0d |  |  | Pas de variance |
| 29 | 6.2 | Enduit | 5d | 2019-11-08 | 2019-11-14 | 28 | 2019-11-08 | 2019-11-14 | 5d | 0d |  |  | Pas de variance |
| 30 | 7 | **Seconde oeuvre** | 6d | 2019-09-20 | 2019-09-27 |  | 2019-09-20 | 2019-09-27 | 6d | -1d | 0d |  | Pas de variance |
| 31 | 7.1 | **Chauffage, climatisation, plomberie** | 6d | 2019-09-20 | 2019-09-27 |  | 2019-09-20 | 2019-09-27 | 6d | -1d | 0d |  | Pas de variance |
| 32 | 7.1.1 | Chauffage | 6d | 2019-09-20 | 2019-09-27 | 23 | 2019-09-20 | 2019-09-27 | 6d | -1d | 0d | 2019-09-26 | Pas de variance |
| 33 | 7.1.2 | Climatisation | 5d | 2019-09-20 | 2019-09-26 | 32SS | 2019-09-20 | 2019-09-26 | 5d | 35d | 0d |  | Pas de variance |
| 34 | 7.1.3 | Plomberie | 5d | 2019-09-20 | 2019-09-26 | 33SS | 2019-09-20 | 2019-09-26 | 5d | 35d |  |  | Pas de variance |
