# Lancement de nouveau produit

Schedule from MS Project, 2020-07-30 to 2020-08-26, 7 hours a day.

## Calendars

- Standard: Mon-Fri 09:00-12:00, 14:00-18:00; Sat-Sun off.

## Resources

| Resource |
| --- |
| Ingénierie |
| Fabrication |
| Marketing |
| Directeur de clientèle |
| Support technique |
| Service après-vente |
| Chef de produit |

## Schedule

| ID | WBS | Task | Type | Duration | Start | Finish | Predecessors | Total slack | Resources | Work |
| --- | --- | --- | --- | --- | --- | --- | --- | --- | --- | --- |
| 1 | 1 | Pour plus de détails sur l'objectif de ce modèle, lisez la remarque | milestone | 0d | 2020-07-30 | 2020-07-30 |  | 0d |  |  |
| 2 | 2 | **Préparation du lancement d'un nouveau produit** |  | 20d? | 2020-07-30 | 2020-08-26 |  | 0d |  | 332.5h |
| 3 | 2.1 | **Phase 1 - Planification** |  | 7d? | 2020-07-30 | 2020-08-07 |  | 0d |  | 59.5h |
| 4 | 2.1.1 | Identification de l'équipe de lancement |  | 1d? | 2020-07-30 | 2020-07-30 | 1 | 0d | Ingénierie; Fabrication; Marketing; Directeur de clientèle; Support technique; Service après-vente; Chef de produit | 10.5h |
| 5 | 2.1.2 | Détermination des objectives de vente |  | 1d? | 2020-07-31 | 2020-07-31 | 4 | 0d | Chef de produit | 7h |
| 6 | 2.1.3 | Définition des buts du lancement (calendrier du lancement et objectifs de publicité) |  | 1d? | 2020-08-03 | 2020-08-03 | 5 | 0d | Chef de produit | 7h |
| 7 | 2.1.4 | **Détermination des partenaires (le cas échéant)** |  | 1d? | 2020-08-04 | 2020-08-04 |  | 0d |  | 21h |
| 8 | 2.1.4.1 | Identification des partenaires de canal |  | 1d? | 2020-08-04 | 2020-08-04 | 6 | 0d | Marketing | 7h |
| 9 | 2.1.4.2 | Identification des partenaires de vente au détail |  | 1d? | 2020-08-04 | 2020-08-04 | 6 | 0d | Marketing | 7h |
| 10 | 2.1.4.3 | Identification des opportunités en ligne |  | 1d? | 2020-08-04 | 2020-08-04 | 6 | 0d | Marketing | 7h |
| 11 | 2.1.5 | **Établissement du budget de lancement** |  | 2d? | 2020-08-05 | 2020-08-06 |  | 0d |  | 14h |
| 12 | 2.1.5.1 | Identification des exigences en matière de budget |  | 1d? | 2020-08-05 | 2020-08-05 | 8, 9, 10 | 0d | Chef de produit | 7h |
| 13 | 2.1.5.2 | Obtention de l'approbation du budget de lancement |  | 1d? | 2020-08-06 | 2020-08-06 | 12 | 0d | Chef de produit | 7h |
| 14 | 2.1.6 | Planification ACHEVÉE |  | 1d? | 2020-08-07 | 2020-08-07 | 13 | 0d |  |  |
| 15 | 2.2 | **Phase 2 - Initiation** |  | 6d? | 2020-08-10 | 2020-08-17 |  | 0d |  | 101.5h |
| 16 | 2.2.1 | Réunion de démarrage du lancement du produit |  | 1d? | 2020-08-10 | 2020-08-10 | 14 | 0d | Chef de produit | 7h |
| 17 | 2.2.2 | **Marketing** |  | 3d? | 2020-08-11 | 2020-08-13 |  | 0d |  | 42h |
| 18 | 2.2.2.1 | Définition d'une plaquette de présentation |  | 1d? | 2020-08-11 | 2020-08-11 | 16 | 0d | Chef de produit | 7h |
| 19 | 2.2.2.2 | **Préparation de l'infrastructure de messagerie** |  | 1d? | 2020-08-12 | 2020-08-12 |  | 0d |  | 35h |
| 20 | 2.2.2.2.1 | Examen de la documentation actuelle et planification des nouvelles exigences |  | 1d? | 2020-08-12 | 2020-08-12 | 18 | 0d | Marketing | 7h |
| 21 | 2.2.2.2.2 | Définition des exigences en matière de communiqués de presse |  | 1d? | 2020-08-12 | 2020-08-12 | 18 | 0d | Marketing | 7h |
| 22 | 2.2.2.2.3 | Définition de la documentation sur les caractéristiques du produit |  | 1d? | 2020-08-12 | 2020-08-12 | 18 | 0d | Marketing | 7h |
| 23 | 2.2.2.2.4 | Définition des argumentaires de vente |  | 1d? | 2020-08-12 | 2020-08-12 | 18 | 0d | Marketing | 7h |
| 24 | 2.2.2.2.5 | Définition des besoins en communication interne |  | 1d? | 2020-08-12 | 2020-08-12 | 18 | 0d | Marketing | 7h |
| 25 | 2.2.2.3 | Infrastructure de messagerie ACHEVÉE |  | 1d? | 2020-08-13 | 2020-08-13 | 20, 21, 22, 23, 24 | 0d |  |  |

Notes:
- 1: Ce modèle aide l'utilisateur à définir et à gérer les composants clés faisant partie d'un plan de lancement de produit arrêté~: objectifs de vente clairement définis~; état de service des canaux de vente vérifié~; fonctions de promotion en place (relations publiques, marketing et publicité)~; et ressources chargées du suivi, du contrôle et de l'exécution. / Le lancement d'un produit s'effectue en principe sous la direction de l'entreprise de marketing et du chef de produit. Tous les autres services jouent un rôle de soutien dans le cadre de l'agenda et du plan de lancement. La majorité des activités de ce modèle portent dès lors sur des activités de marketing. D'autres plans seront nécessaires pour le travail réalisé dans les autres services en vue du lancement du produit.
- 16: Cette tâche prend généralement la forme d'une réunion rassemblant les principaux acteurs. L'objectif de cette réunion est de partager les objectifs de vente et de lancement du produit et de fournir aux différents services suffisamment d'informations pour élaborer leurs propres plans en vue du lancement.

| ID | WBS | Task | Type | Duration | Start | Finish | Predecessors | Total slack | Free slack | Resources | Work |
| --- | --- | --- | --- | --- | --- | --- | --- | --- | --- | --- | --- |
| 26 | 2.2.3 | **Ingénierie** |  | 1d? | 2020-08-11 | 2020-08-11 |  | 2d |  |  | 7h |
| 27 | 2.2.3.1 | Alignement du planning de sortie commerciale du produit sur la stratégie commerciale |  | 1d? | 2020-08-11 | 2020-08-11 | 16 | 2d |  | Ingénierie | 7h |
| 28 | 2.2.4 | **Fabrication** |  | 1d? | 2020-08-11 | 2020-08-11 |  | 2d |  |  | 7h |
| 29 | 2.2.4.1 | Préparation de la fabrication en grandes quantités en fonction des objectifs de vente |  | 1d? | 2020-08-11 | 2020-08-11 | 16 | 2d |  | Fabrication | 7h |
| 30 | 2.2.5 | **Directeur de clientèle** |  | 1d? | 2020-08-11 | 2020-08-11 |  | 2d |  |  | 7h |
| 31 | 2.2.5.1 | Planification de la dotation en personnel de la force de vente et de la formation en vue de satisfaire aux objectifs de vente |  | 1d? | 2020-08-11 | 2020-08-11 | 16 | 2d |  | Directeur de clientèle | 7h |
| 32 | 2.2.6 | **Support technique** |  | 1d? | 2020-08-11 | 2020-08-11 |  | 2d |  |  | 7h |
| 33 | 2.2.6.1 | Planification de la dotation en personnel des équipes en vue de satisfaire aux objectifs de vente |  | 1d? | 2020-08-11 | 2020-08-11 | 16 | 2d |  | Support technique | 7h |
| 34 | 2.2.7 | **Service après-vente** |  | 1d? | 2020-08-11 | 2020-08-11 |  | 2d |  |  | 7h |
| 35 | 2.2.7.1 | Planification de la dotation en personnel du service après-vente en vue de satisfaire aux objectifs de vente |  | 1d? | 2020-08-11 | 2020-08-11 | 16 | 2d |  | Service après-vente | 7h |
| 36 | 2.2.8 | Fourniture d'exigences et de budgets mis à jour sur la base des plans des différents services |  | 1d? | 2020-08-14 | 2020-08-14 | 35, 33, 31, 29, 27, 25 | 0d |  | Ingénierie; Fabrication; Marketing; Directeur de clientèle; Support technique; Service après-vente | 10.5h |
| 37 | 2.2.9 | Obtention de l'approbation pour les plans et budgets mis à jour |  | 1d? | 2020-08-17 | 2020-08-17 | 36 | 0d |  | Chef de produit | 7h |
| 38 | 2.2.10 | Phase d'initiation ACHEVÉE | milestone | 0d | 2020-08-17 | 2020-08-17 | 37 | 0d |  |  |  |
| 39 | 2.3 | **Phase 3 - Exécution** |  | 4d? | 2020-08-18 | 2020-08-21 |  | 0d |  |  | 119h |
| 40 | 2.3.1 | **Marketing** |  | 4d? | 2020-08-18 | 2020-08-21 |  | 0d |  |  | 63h |
| 41 | 2.3.1.1 | Évaluation du marché et affinement de la messagerie |  | 1d? | 2020-08-18 | 2020-08-18 | 38 | 0d |  | Marketing | 7h |
| 42 | 2.3.1.2 | Conception et commande du packaging final |  | 1d? | 2020-08-19 | 2020-08-19 | 41 | 0d |  | Marketing | 7h |
| 43 | 2.3.1.3 | Création de communiqués de presse |  | 1d? | 2020-08-19 | 2020-08-19 | 41 | 0d |  | Marketing | 7h |
| 44 | 2.3.1.4 | Création de documentation sur les caractéristiques du produit |  | 1d? | 2020-08-19 | 2020-08-19 | 41 | 0d |  | Marketing | 7h |
| 45 | 2.3.1.5 | Création d'argumentaires de vente |  | 1d? | 2020-08-19 | 2020-08-19 | 41 | 0d |  | Marketing | 7h |
| 46 | 2.3.1.6 | Communication des détails du lancement du produit au sein de l'entreprise |  | 1d? | 2020-08-20 | 2020-08-20 | 41, 42, 43, 44, 45 | 0d |  | Marketing | 7h |
| 47 | 2.3.1.7 | Création de formations portant sur la vente, le service après-vente et le produit |  | 1d? | 2020-08-21 | 2020-08-21 | 46 | 0d |  | Marketing | 7h |
| 48 | 2.3.1.8 | Mise à jour des prévisions du produit en fonction de la réaction du marché et de l'analyse du marché |  | 1d? | 2020-08-19 | 2020-08-19 | 41 | 1d | 0d | Marketing | 7h |
| 49 | 2.3.1.9 | Mise à jour du plan de lancement sur la base des prévisions |  | 1d? | 2020-08-20 | 2020-08-20 | 48 | 1d |  | Marketing | 7h |

Notes:
- 27: Le service technique disposera de ses propres plans pour parachever le développement du produit. Sa participation à ce plan vise la coordination et l'alignement en termes de calendrier du lancement, de spécifications du produit et d'expertise technique quant aux capacités et caractéristiques du produit.
- 29: Le service de fabrication disposera de ses propres plans pour préparer et produire le produit. Sa participation à ce plan vise la coordination et l'alignement en termes de calendrier du lancement, d'exigences de fabrication, mais aussi de qualité du produit fini.
- 31: La participation du service commercial à ce plan vise la coordination et l'alignement en termes de calendrier du lancement, de formation de l'équipe de vente et d'exigences de recrutement.
- 33: Le support produit participe au plan de lancement afin de s'assurer de bien cerner le calendrier du lancement et de disposer d'une équipe formée prête à dispenser un support répondant aux objectifs de vente.
- 35: La participation du service après-vente est similaire à celle du support produit. Le service après-vente participe au plan de lancement afin de s'assurer de bien cerner le calendrier du lancement et de disposer d'une équipe formée prête à dispenser un support répondant aux objectifs de vente.
- 41: La réceptivité du marché est évaluée selon la réaction de clients clés, des groupes de clientèle, des marchés tests ou des tests clientèle.

| ID | WBS | Task | Type | Duration | Start | Finish | Predecessors | Total slack | Free slack | Resources | Work |
| --- | --- | --- | --- | --- | --- | --- | --- | --- | --- | --- | --- |
| 50 | 2.3.2 | **Ingénierie** |  | 1d? | 2020-08-18 | 2020-08-18 |  | 3d |  |  | 7h |
| 51 | 2.3.2.1 | Finalisation et test du produit |  | 1d? | 2020-08-18 | 2020-08-18 | 38 | 3d |  | Ingénierie | 7h |
| 52 | 2.3.3 | **Fabrication** |  | 1d? | 2020-08-18 | 2020-08-18 |  | 3d |  |  | 14h |
| 53 | 2.3.3.1 | Création de produits prototypes |  | 1d? | 2020-08-18 | 2020-08-18 | 38 | 3d |  | Fabrication | 7h |
| 54 | 2.3.3.2 | Préparation du canal de distribution |  | 1d? | 2020-08-18 | 2020-08-18 | 38 | 3d |  | Fabrication | 7h |
| 55 | 2.3.4 | **Directeur de clientèle** |  | 1d? | 2020-08-18 | 2020-08-18 |  | 3d |  |  | 7h |
| 56 | 2.3.4.1 | Établissement des canaux de vente |  | 1d? | 2020-08-18 | 2020-08-18 | 38 | 3d |  | Directeur de clientèle | 7h |
| 57 | 2.3.5 | **Support technique** |  | 1d? | 2020-08-18 | 2020-08-18 |  | 3d |  |  | 7h |
| 58 | 2.3.5.1 | Mise en place des mécanismes de support produit |  | 1d? | 2020-08-18 | 2020-08-18 | 38 | 3d |  | Support technique | 7h |
| 59 | 2.3.6 | **Service après-vente** |  | 1d? | 2020-08-18 | 2020-08-18 |  | 3d |  |  | 7h |
| 60 | 2.3.6.1 | Détermination des entreprises de service après-vente |  | 1d? | 2020-08-18 | 2020-08-18 | 38 | 3d |  | Service après-vente | 7h |
| 61 | 2.3.7 | **Préparation au lancement en fabrication** |  | 2d? | 2020-08-18 | 2020-08-19 |  | 2d |  |  | 14h |
| 62 | 2.3.7.1 | Mise en œuvre du contrôle des modifications |  | 1d? | 2020-08-18 | 2020-08-18 | 38 | 2d | 0d | Chef de produit | 7h |
| 63 | 2.3.7.2 | Finalisation de la stratégie de support |  | 1d? | 2020-08-19 | 2020-08-19 | 62 | 2d |  | Chef de produit | 7h |
| 64 | 2.3.8 | Phase d'exécution ACHEVÉE | milestone | 0d | 2020-08-21 | 2020-08-21 | 63, 62, 60, 58, 56, 54, 53, 51, 49, 47 | 0d |  |  |  |
| 65 | 2.4 | **Phase 4 - Lancement en fabrication** |  | 3d? | 2020-08-24 | 2020-08-26 |  | 0d |  |  | 52.5h |
| 66 | 2.4.1 | **Fabrication** |  | 2d? | 2020-08-24 | 2020-08-25 |  | 0d |  |  | 21h |
| 67 | 2.4.1.1 | Certification du produit |  | 1d? | 2020-08-24 | 2020-08-24 | 64 | 0d |  | Fabrication; Chef de produit | 14h |
| 68 | 2.4.1.2 | Fabrication du volume de produit prévu afin de satisfaire aux objectifs de vente |  | 1d? | 2020-08-25 | 2020-08-25 | 67 | 0d |  | Fabrication | 7h |
| 69 | 2.4.2 | **Directeur de clientèle** |  | 1d? | 2020-08-24 | 2020-08-24 |  | 1d |  |  | 7h |
| 70 | 2.4.2.1 | Recrutement et formation de l'équipe de vente |  | 1d? | 2020-08-24 | 2020-08-24 | 64 | 1d |  | Directeur de clientèle | 7h |
| 71 | 2.4.3 | **Support technique** |  | 1d? | 2020-08-24 | 2020-08-24 |  | 1d |  |  | 7h |
| 72 | 2.4.3.1 | Recrutement et formation de l'équipe de support produit |  | 1d? | 2020-08-24 | 2020-08-24 | 64 | 1d |  | Support technique | 7h |
| 73 | 2.4.4 | **Service après-vente** |  | 1d? | 2020-08-24 | 2020-08-24 |  | 1d |  |  | 7h |
| 74 | 2.4.4.1 | Recrutement et formation de l'équipe de service après-vente |  | 1d? | 2020-08-24 | 2020-08-24 | 64 | 1d |  | Service après-vente | 7h |

Notes:
- 51: Les performances du produit sont évaluées par le biais de tests et de la qualification.
- 53: Les processus de production sont initialement développés à l'aide de chaînes de production pilotes, puis de chaînes de production réelles.
- 54: Le canal de distribution est approvisionné avec le niveau approprié de produit.
- 62: Toute la documentation sur le produit est achevée et finalisée, et le produit est en cours de contrôle de conformité. La documentation utilisateur, les manuels d'utilisation et les notices d'entretien sont également prêts.
- 67: Le produit et le processus de production remplissent les conditions ou ont été validés, et toutes les approbations réglementaires et/ou certifications ont été obtenues.

| ID | WBS | Task | Type | Duration | Start | Finish | Predecessors | Total slack | Resources | Work |
| --- | --- | --- | --- | --- | --- | --- | --- | --- | --- | --- |
| 75 | 2.4.5 | **Examen final de la qualité** |  | 1d? | 2020-08-26 | 2020-08-26 |  | 0d |  | 10.5h |
| 76 | 2.4.5.1 | Exécution de l'examen final de la qualité |  | 1d? | 2020-08-26 | 2020-08-26 | 74, 72, 70, 68 | 0d | Ingénierie; Fabrication; Marketing; Directeur de clientèle; Support technique; Service après-vente; Chef de produit | 10.5h |
| 77 | 2.4.5.2 | Information sur la sortie commerciale du produit ACHEVÉE | milestone | 0d | 2020-08-26 | 2020-08-26 | 76 | 0d |  |  |
| 78 | 2.4.5.3 | Les matières nécessaires sont en stock ou en commande. | milestone | 0d | 2020-08-26 | 2020-08-26 | 76 | 0d |  |  |
| 79 | 2.4.5.4 | Documentation ACHEVÉE | milestone | 0d | 2020-08-26 | 2020-08-26 | 76 | 0d |  |  |
| 80 | 2.4.5.5 | Formation ACHEVÉE | milestone | 0d | 2020-08-26 | 2020-08-26 | 76 | 0d |  |  |
| 81 | 2.4.6 | Lancement du produit | milestone | 0d | 2020-08-26 | 2020-08-26 | 80, 79, 78, 77, 76 | 0d |  |  |

Notes:
- 79: La publicité, les brochures du produit, la documentation commerciale, les communiqués de presse et les pages Web ont été préparés et sont prêts à être distribués en temps opportun.
- 80: Le personnel du service commercial, après-vente et support a été formé, ou un programme de formation échelonné est en cours.
- 81: Le nouveau produit est lancé lorsque le service après-vente, le service commercial et les canaux de distribution sont prêts.
